# planificacion_DPPI24_E11

Schedule from MS Project, 2024-03-01 to 2024-08-13.

## Calendars

- Estándar: Mon-Fri 09:00-13:00, 15:00-19:00; Sat-Sun off.

## Resources

| Resource |
| --- |
| Jefe del Proyecto |
| Consultor de Tecnologia |
| Arquitecto del Software |
| Analista de Sistemas |
| Desarrollador Senior 1 |
| Desarrollador Junior 1 |
| Desarrollador Senior 2 |
| Desarrollador Junior 2 |
| Portatil |
| Cableado |
| Monitor 45'' |
| Telefono IPVOID |
| Servidor Central |
| SAI |
| Rack de Discos |
| Dispositivos de Geolocalización |
| Telefono Android |
| Telefono IOS |
| Tester |
| Switch de comunicaciones |
| Router |
| Responsable y administrador de sistemas |
| Coordinador del Servicio |

## Schedule

| ID | WBS | Task | Duration | Start | Finish | Predecessors | Total slack | Free slack | Constraint | Resources | Work |
| --- | --- | --- | --- | --- | --- | --- | --- | --- | --- | --- | --- |
| 1 | 1 | **Realización del proyecto** | 117.86d? | 2024-03-01 | 2024-08-13 |  | 0d |  |  |  | 1299.39h |
| 2 | 1.1 | **Documentación** | 115.62d? | 2024-03-01 | 2024-08-09 |  | 2.24d |  |  |  | 36h |
| 3 | 1.1.1 | DV - Documento de visión | 1d? | 2024-03-01 | 2024-03-01 |  | 2.75d | 0d |  | Desarrollador Junior 2 | 8h |
| 4 | 1.1.2 | DR - Documento de requisitos | 1d? | 2024-03-04 | 2024-03-04 | 3 | 2.75d | 0d |  | Coordinador del Servicio | 8h |
| 5 | 1.1.3 | PP - Plan de proyecto | 0.25d? | 2024-03-05 | 2024-03-05 | 4 | 2.75d | 0d |  | Coordinador del Servicio | 2h |
| 6 | 1.1.4 | DD - Documentación de diseño | 1d? | 2024-03-05 | 2024-03-05 | 4 | 39.28d | 0d |  | Arquitecto del Software [25%] | 2h |
| 7 | 1.1.5 | PPS - Plan de pruebas software | 1d? | 2024-03-05 | 2024-03-05 | 4 | 112.61d | 23.12d |  | Tester [12.5%] | 1h |
| 8 | 1.1.6 | Ddes - Documento de despliegue | 1d? | 2024-03-06 | 2024-03-06 | 6 | 113.86d |  |  | Desarrollador Junior 2 | 8h |
| 9 | 1.1.7 | **Manual de usuario** | 89.5d? | 2024-04-08 | 2024-08-09 |  | 2.24d |  |  |  | 7h |
| 10 | 1.1.7.1 | Manual de usuario - Integración con sistemas centrales | 1d? | 2024-04-08 | 2024-04-09 | 34 | 90.74d |  |  | Desarrollador Junior 1 [12.5%] | 1h |
| 11 | 1.1.7.2 | Manual de usuario - Sistema de mensajería | 0.12d? | 2024-05-06 | 2024-05-06 | 40 | 71.11d |  |  | Desarrollador Junior 2 | 1h |
| 12 | 1.1.7.3 | Manual de usuario - Gestión de usuarios | 1d? | 2024-05-30 | 2024-05-31 | 52 | 52.11d |  |  | Desarrollador Junior 1 [12.5%] | 1h |
| 13 | 1.1.7.4 | Manual de usuario - Sistema de geoposicionamiento | 0.12d? | 2024-06-26 | 2024-06-26 | 68 | 33.86d |  |  | Desarrollador Junior 2 | 1h |
| 14 | 1.1.7.5 | Manual de usuario - Aplicaciones de usuario app de avisos y mensajería | 0.12d? | 2024-07-03 | 2024-07-03 | 79 | 29.36d |  |  | Desarrollador Junior 1 | 1h |
| 15 | 1.1.7.6 | Manual de usuario - Dashboard de seguimiento | 1d? | 2024-07-15 | 2024-07-16 | 90 | 20.29d |  |  | Desarrollador Junior 1 [12.5%] | 1h |
| 16 | 1.1.7.7 | Manual de usuario - Aplicaciones de usuario para la gestión de emergencias | 1d? | 2024-08-08 | 2024-08-09 | 100 | 2.24d |  |  | Desarrollador Junior 2 [12.5%] | 1h |
| 17 | 1.2 | **Análisis de requisitos** | 96.82d? | 2024-03-05 | 2024-07-17 |  | 5.55d |  |  |  | 112h |
| 18 | 1.2.1 | Análisis - Integración con sistemas centrales | 2d? | 2024-03-05 | 2024-03-06 | 4 | 38.28d | 0d | start no earlier than 2024-03-01 | Analista de Sistemas | 16h |
| 19 | 1.2.2 | Análisis - Sistema de mensajería | 1.88d? | 2024-04-08 | 2024-04-09 | 34 | 29.36d | 0d |  | Analista de Sistemas | 15h |
| 20 | 1.2.3 | Análisis - Gestión de usuarios | 2d? | 2024-05-06 | 2024-05-08 | 18, 40, 19 | 26.51d | 0d |  | Analista de Sistemas | 16h |
| 21 | 1.2.4 | Análisis - Sistema de geoposicionamiento | 1.75d? | 2024-05-30 | 2024-06-03 | 52 | 16.37d | 0d |  | Analista de Sistemas | 14h |
| 22 | 1.2.5 | Análisis - Aplicaciones de usuario app de avisos y mensajería | 2d? | 2024-06-03 | 2024-06-05 | 19, 52, 20, 21 | 35.87d | 0d |  | Analista de Sistemas | 16h |
| 23 | 1.2.6 | Análisis - Dashboard de seguimiento | 2.12d? | 2024-06-26 | 2024-06-28 | 19, 21, 68, 20 | 3.74d | 0d |  | Analista de Sistemas | 17h |
| 24 | 1.2.7 | Análisis - Aplicaciones de usuario para la gestión de emergencias | 2.25d? | 2024-07-15 | 2024-07-17 | 20, 90 | 0.3d | 0d |  | Analista de Sistemas | 18h |

| ID | WBS | Task | Duration | Start | Finish | Predecessors | Total slack | Free slack | Constraint | Resources | Work |
| --- | --- | --- | --- | --- | --- | --- | --- | --- | --- | --- | --- |
| 25 | 1.3 | **Diseño y arquitectura** | 96.7d? | 2024-03-07 | 2024-07-19 |  | 7.67d |  |  |  | 107h |
| 26 | 1.3.1 | Diseño y arquitectura - Integración con sistemas centrales | 1.88d? | 2024-03-07 | 2024-03-08 | 18, 6 | 38.28d | 0d | start no earlier than 2024-03-01 | Arquitecto del Software | 15h |
| 27 | 1.3.2 | Diseño y arquitectura - Sistema de mensajería | 2.12d? | 2024-04-10 | 2024-04-12 | 19 | 29.36d | 0d | start no earlier than 2024-03-11 | Arquitecto del Software | 17h |
| 28 | 1.3.3 | Diseño y arquitectura - Gestión de usuarios | 1.75d? | 2024-05-08 | 2024-05-10 | 20 | 26.51d | 0d | start no earlier than 2024-03-25 | Arquitecto del Software | 14h |
| 29 | 1.3.4 | Diseño y arquitectura- Sistema de geoposicionamiento | 1.75d? | 2024-06-03 | 2024-06-05 | 21 | 16.37d | 0d | start no earlier than 2024-04-02 | Arquitecto del Software | 14h |
| 30 | 1.3.5 | Diseño y arquitectura - Aplicaciones de usuario app de avisos y mensajería | 2d? | 2024-06-05 | 2024-06-11 | 22 | 35.87d | 4.88d |  | Arquitecto del Software | 16h |
| 31 | 1.3.6 | Diseño y arquitectura - Dashboard de seguimiento | 2d? | 2024-07-01 | 2024-07-02 | 23 | 3.74d | 0d |  | Arquitecto del Software | 16h |
| 32 | 1.3.7 | Diseño y arquitectura - Aplicaciones de usuario para la gestión de emergencias | 1.88d? | 2024-07-17 | 2024-07-19 | 24 | 0.3d | 0d |  | Arquitecto del Software | 15h |
| 33 | 1.4 | **Construcción** | 108.75d? | 2024-03-08 | 2024-08-08 |  | 2.11d |  |  |  | 740.23h |
| 34 | 1.4.1 | **Integración con sistemas centrales** | 20.25d? | 2024-03-08 | 2024-04-08 | 26 | 29.5d | 0d |  |  | 84h |
| 35 | 1.4.1.1 | Conectividad bidireccional | 1.5d? | 2024-03-08 | 2024-03-12 |  | 48.11d |  |  | Desarrollador Junior 1 | 12h |
| 36 | 1.4.1.2 | Seguridad y Autenticación | 2.62d? | 2024-03-11 | 2024-03-20 |  | 42.16d |  |  | Desarrollador Senior 2 | 21h |
| 37 | 1.4.1.3 | Manejo de las APIS | 3.38d? | 2024-03-08 | 2024-03-26 |  | 38.28d |  |  | Desarrollador Senior 1 | 27h |
| 38 | 1.4.1.4 | Integración del HIS | 1.88d? | 2024-04-03 | 2024-04-04 |  | 30.61d |  | start no earlier than 2024-04-03 | Desarrollador Junior 2 | 15h |
| 39 | 1.4.1.5 | Sincronización de datos | 1.12d? | 2024-04-05 | 2024-04-08 |  | 29.36d |  | start no earlier than 2024-04-05 | Desarrollador Junior 1 | 9h |
| 40 | 1.4.2 | **Sistema de mensajería** | 16.5d? | 2024-04-12 | 2024-05-06 | 27 | 26.84d | 0d |  |  | 124h |
| 41 | 1.4.2.1 | Extraer alertas del middleware | 1.38d? | 2024-04-12 | 2024-04-15 |  | 29.5d | 0d | finish no earlier than 2024-03-04 | Desarrollador Senior 2 | 11h |
| 42 | 1.4.2.2 | Extraer mensajes del middleware | 1.38d? | 2024-04-12 | 2024-04-15 |  | 29.36d | 0d | finish no earlier than 2024-03-04 | Desarrollador Senior 1 | 11h |
| 43 | 1.4.2.3 | Listado de conversaciones | 1.25d? | 2024-04-15 | 2024-04-16 | 42 | 29.36d | 0d | finish no earlier than 2024-03-05 | Desarrollador Senior 2 | 10h |
| 44 | 1.4.2.4 | Validación del parametro de busqueda | 1.5d? | 2024-04-15 | 2024-04-16 |  | 29.61d | 0.5d | finish no earlier than 2024-03-04 | Desarrollador Junior 1 | 12h |
| 45 | 1.4.2.5 | Validar alerta | 1.5d? | 2024-04-15 | 2024-04-16 |  | 39.01d | 0d | finish no earlier than 2024-03-04 | Desarrollador Junior 2 | 12h |
| 46 | 1.4.2.6 | Enviar alerta | 1.62d? | 2024-04-16 | 2024-04-18 | 45 | 39.01d |  | finish no earlier than 2024-03-06 | Desarrollador Junior 1 | 13h |
| 47 | 1.4.2.7 | Listado de mensajes en una conversacion | 1.25d? | 2024-04-18 | 2024-04-19 | 43 | 37.76d |  | finish no earlier than 2024-03-06 | Desarrollador Junior 1 | 10h |
| 48 | 1.4.2.8 | Validar mensaje | 1.5d? | 2024-04-22 | 2024-04-23 |  | 33.91d | 7.4d | start no earlier than 2024-04-22 | Desarrollador Junior 2 | 12h |
| 49 | 1.4.2.9 | Busqueda de una conversación | 1.25d? | 2024-04-30 | 2024-05-01 | 43, 44 | 29.89d |  | finish no earlier than 2024-03-06 | Desarrollador Junior 1 | 10h |
| 50 | 1.4.2.10 | Listado de alertas | 1.25d? | 2024-05-02 | 2024-05-03 | 41 | 27.75d |  | finish no earlier than 2024-03-05 | Desarrollador Junior 2 | 10h |
| 51 | 1.4.2.11 | Enviar mensaje | 1.62d? | 2024-05-03 | 2024-05-06 | 48 | 26.51d |  | start no earlier than 2024-05-03 | Desarrollador Junior 1 | 13h |

| ID | WBS | Task | Duration | Start | Finish | Predecessors | Total slack | Free slack | Constraint | Resources | Work |
| --- | --- | --- | --- | --- | --- | --- | --- | --- | --- | --- | --- |
| 52 | 1.4.3 | **Gestión de usuarios** | 14.38d? | 2024-05-10 | 2024-05-30 | 28 | 16.71d | 0d |  |  | 142h |
| 53 | 1.4.3.1 | Visualizar Historial Clinico | 0.88d? | 2024-05-10 | 2024-05-13 |  | 26.51d | 0d | start no earlier than 2024-03-15 | Desarrollador Junior 1 | 7h |
| 54 | 1.4.3.2 | Listado de citas | 0.88d? | 2024-05-10 | 2024-05-13 |  | 27d | 0d | finish no earlier than 2024-03-01 | Desarrollador Junior 2 | 7h |
| 55 | 1.4.3.3 | Listado de pruebas | 0.88d? | 2024-05-10 | 2024-05-13 |  | 27d | 1.75d | finish no earlier than 2024-03-01 | Desarrollador Senior 1 | 7h |
| 56 | 1.4.3.4 | Filtrar historial clinico por caracteristicas | 1.12d? | 2024-05-13 | 2024-05-14 | 53 | 27.12d | 1.75d | finish no earlier than 2024-03-05 | Desarrollador Junior 2 | 9h |
| 57 | 1.4.3.5 | Obtener datos de una cita en concreto | 1.25d? | 2024-05-13 | 2024-05-14 | 54 | 28.62d |  | finish no earlier than 2024-03-07 | Desarrollador Junior 1 | 10h |
| 58 | 1.4.3.6 | Obtener datos de un h.c en concreto | 1.25d? | 2024-05-13 | 2024-05-16 | 53 | 26.51d |  | finish no earlier than 2024-03-06 | Desarrollador Senior 1 | 10h |
| 59 | 1.4.3.7 | Visualizacion de una cita especifica | 0.88d? | 2024-05-14 | 2024-05-17 |  | 25.12d |  | finish no earlier than 2024-03-08 | Desarrollador Junior 2 | 7h |
| 60 | 1.4.3.8 | Filtrar historial clinico por usuario | 1.12d? | 2024-05-15 | 2024-05-16 | 53 | 25.37d | 0d | start no earlier than 2024-05-15 | Desarrollador Senior 2 | 9h |
| 61 | 1.4.3.9 | Obtener datos de una prueba en concreto | 1.25d? | 2024-05-15 | 2024-05-16 | 55 | 26.87d |  | start no earlier than 2024-05-15 | Desarrollador Junior 1 | 10h |
| 62 | 1.4.3.10 | Filtrar citas por caracteristicas | 1.12d? | 2024-05-15 | 2024-05-16 | 54 | 25.25d | 7.99d | start no earlier than 2024-05-15 | Desarrollador Senior 1 | 9h |
| 63 | 1.4.3.11 | Validar filtros historial clinico | 1.62d? | 2024-05-16 | 2024-05-17 | 60, 56 | 25.37d |  | finish no earlier than 2024-03-04 | Desarrollador Junior 2 | 13h |
| 64 | 1.4.3.12 | Visualizacion de una prueba especifica | 0.88d? | 2024-05-23 | 2024-05-24 |  | 20.75d |  | finish no earlier than 2024-03-08 | Desarrollador Junior 1 | 7h |
| 65 | 1.4.3.13 | Filtrar pruebas por caracteristicas | 1.12d? | 2024-05-24 | 2024-05-27 | 55 | 18.25d | 1.88d | start no earlier than 2024-05-24 | Desarrollador Senior 2 | 9h |
| 66 | 1.4.3.14 | Validar filtros citas | 1.75d? | 2024-05-28 | 2024-05-29 | 62 | 17.26d |  | start no earlier than 2024-05-28 | Desarrollador Junior 2 | 14h |
| 67 | 1.4.3.15 | Validar filtros pruebas | 1.75d? | 2024-05-29 | 2024-05-30 | 65 | 16.37d |  | start no earlier than 2024-05-29 | Desarrollador Senior 1 | 14h |
| 68 | 1.4.4 | **Sistema de geoposicionamiento** | 15.62d? | 2024-06-05 | 2024-06-26 | 29 | 4.08d | 0d |  |  | 99h |
| 69 | 1.4.4.1 | Listado de vehiculos en funcionamiento | 1d? | 2024-06-05 | 2024-06-06 |  | 18.37d |  |  | Desarrollador Junior 1 | 8h |
| 70 | 1.4.4.2 | Asignación de ambulancias en función de la proximidad y la carga de trabajo. | 2d? | 2024-06-05 | 2024-06-10 |  | 16.37d |  |  | Desarrollador Senior 2 | 16h |
| 71 | 1.4.4.3 | Histórico de rutas | 1.25d? | 2024-06-12 | 2024-06-13 |  | 13.37d |  | start no earlier than 2024-06-12 | Desarrollador Junior 2 | 10h |
| 72 | 1.4.4.4 | Listado de vehiculos parados | 1d? | 2024-06-14 | 2024-06-17 |  | 11.27d |  | start no earlier than 2024-06-14 | Desarrollador Junior 1 | 8h |
| 73 | 1.4.4.5 | Informes de actividad y desempeño | 1d? | 2024-06-18 | 2024-06-19 |  | 9.49d |  | start no earlier than 2024-06-18 | Desarrollador Junior 1 [87.5%] | 7h |
| 74 | 1.4.4.6 | Seguimiento en tiempo real de los vehículos | 1.12d? | 2024-06-20 | 2024-06-21 |  | 7.49d |  | start no earlier than 2024-06-20 | Desarrollador Junior 2 | 9h |
| 75 | 1.4.4.7 | Comunicación con el centro de control | 1.38d? | 2024-06-20 | 2024-06-24 |  | 6.52d |  | start no earlier than 2024-06-20 | Desarrollador Junior 1 | 11h |
| 76 | 1.4.4.8 | Registro de mantenimiento de vehículos | 1d? | 2024-06-24 | 2024-06-24 |  | 5.62d |  | start no earlier than 2024-06-24 | Desarrollador Junior 2 | 8h |
| 77 | 1.4.4.9 | Notificaciones de emergencias | 1.88d? | 2024-06-25 | 2024-06-26 |  | 3.74d |  | start no earlier than 2024-06-25 | Desarrollador Senior 1 | 15h |
| 78 | 1.4.4.10 | Notificaciones a familiares | 1d? | 2024-06-25 | 2024-06-25 |  | 4.62d |  | start no earlier than 2024-06-25 | Desarrollador Junior 2 [87.5%] | 7h |

| ID | WBS | Task | Duration | Start | Finish | Predecessors | Total slack | Free slack | Constraint | Resources | Work |
| --- | --- | --- | --- | --- | --- | --- | --- | --- | --- | --- | --- |
| 79 | 1.4.5 | **Aplicaciones de usuario app de avisos y mensajería** | 11d? | 2024-06-18 | 2024-07-03 | 30 | 28.36d | 0d |  |  | 105.23h |
| 80 | 1.4.5.1 | Archivo de mensajes | 1.25d? | 2024-06-18 | 2024-06-19 |  | 35.4d | 0d | start no earlier than 2024-06-18 | Desarrollador Junior 2 | 10h |
| 81 | 1.4.5.2 | Histórico de alertas | 1.6d? | 2024-06-19 | 2024-06-20 |  | 30.24d | 0d | start no earlier than 2024-06-19 | Desarrollador Junior 1 | 12.8h |
| 82 | 1.4.5.3 | Adición de mensajes | 1.33d? | 2024-06-19 | 2024-06-20 | 80 | 35.4d | 7.04d | start no earlier than 2024-06-19 | Desarrollador Senior 1 [75%] | 8h |
| 83 | 1.4.5.4 | Listado de mensajes (dentro de una conversación) | 1.38d? | 2024-06-21 | 2024-06-24 | 80 | 35.36d |  | start no earlier than 2024-06-21 | Desarrollador Senior 1 | 11h |
| 84 | 1.4.5.5 | Creación de una conversación | 1.38d? | 2024-06-25 | 2024-06-26 | 80 | 33.29d |  | start no earlier than 2024-06-25 | Desarrollador Senior 2 | 11h |
| 85 | 1.4.5.6 | Listado de alertas | 1.43d? | 2024-06-26 | 2024-06-28 | 81 | 30.29d | 0d |  | Desarrollador Junior 1 | 11.43h |
| 86 | 1.4.5.7 | Filtrado de alertas | 1.38d? | 2024-06-28 | 2024-07-01 | 85 | 30.29d |  |  | Desarrollador Senior 2 | 11h |
| 87 | 1.4.5.8 | Notificaciones push para las alertas | 1d? | 2024-06-24 | 2024-07-01 | 81 | 30.24d |  |  | Desarrollador Junior 1 | 8h |
| 88 | 1.4.5.9 | Listado de conversaciones (conversación entendida como colección de mensajes entre 2 usuarios) | 1.38d? | 2024-07-02 | 2024-07-03 | 80 | 28.36d |  | start no earlier than 2024-07-02 | Desarrollador Junior 2 | 11h |
| 89 | 1.4.5.10 | Notificaciones push para los mensajes | 1.38d? | 2024-07-02 | 2024-07-03 | 82 | 28.36d |  | start no earlier than 2024-07-02 | Desarrollador Senior 1 | 11h |
| 90 | 1.4.6 | **Dashboard de seguimiento** | 8.57d? | 2024-07-03 | 2024-07-15 | 31 | 0.3d | 0d |  |  | 80h |
| 91 | 1.4.6.1 | Historico de usuarios | 1.8d? | 2024-07-03 | 2024-07-04 |  | 3.74d | 0d |  | Desarrollador Junior 1 [62.5%] | 9h |
| 92 | 1.4.6.2 | Historico de alertas | 1.6d? | 2024-07-03 | 2024-07-04 |  | 4.04d | 2.4d |  | Desarrollador Junior 2 [62.5%] | 8h |
| 93 | 1.4.6.3 | Historico de ubicaciones de los vehiculos de emergencia | 0.97d? | 2024-07-03 | 2024-07-03 |  | 5.28d | 0d |  | Desarrollador Senior 2 [89.8%] | 7h |
| 94 | 1.4.6.4 | Listado de ubicaciones actuales de los vehículos de emergencia | 1.12d? | 2024-07-03 | 2024-07-05 | 93 | 5.28d | 2.9d |  | Desarrollador Senior 1 | 9h |
| 95 | 1.4.6.5 | Listado de clientes activos | 1.33d? | 2024-07-04 | 2024-07-08 | 91 | 4.08d | 1.87d |  | Desarrollador Junior 1 [75%] | 8h |
| 96 | 1.4.6.6 | Listado de alertas | 1d? | 2024-07-09 | 2024-07-09 | 92 | 2.3d | 2d | start no earlier than 2024-07-09 | Desarrollador Junior 2 [75%] | 6h |
| 97 | 1.4.6.7 | Filtrado de clientes activos | 1.67d? | 2024-07-10 | 2024-07-11 | 95 | 2.21d |  | start no earlier than 2024-07-10 | Desarrollador Junior 1 [75%] | 10h |
| 98 | 1.4.6.8 | Filtrado de vehiculos de emergencia | 1.5d? | 2024-07-10 | 2024-07-11 | 94 | 2.38d |  | start no earlier than 2024-07-10 | Desarrollador Senior 2 | 12h |
| 99 | 1.4.6.9 | Filtrado de alertas | 1.57d? | 2024-07-12 | 2024-07-15 | 96 | 0.3d |  | start no earlier than 2024-07-12 | Desarrollador Senior 1 [87.5%] | 11h |
| 100 | 1.4.7 | **Aplicaciones de usuario para la gestión de emergencias** | 13.93d? | 2024-07-19 | 2024-08-08 | 32 | 0d |  |  |  | 106h |
| 101 | 1.4.7.1 | Visualización de Emergencias Activas. | 1d? | 2024-07-19 | 2024-07-22 |  | 12.93d |  |  | Desarrollador Junior 2 [75%] | 6h |
| 102 | 1.4.7.2 | Seguimiento de Emergencias. | 1d? | 2024-07-19 | 2024-07-22 |  | 12.93d |  |  | Desarrollador Junior 1 | 8h |
| 103 | 1.4.7.3 | Asignación de Recursos para Emergencias. | 1.5d? | 2024-07-19 | 2024-08-01 |  | 5.43d |  |  | Desarrollador Senior 2 | 12h |
| 104 | 1.4.7.4 | Comunicación con Servicios Externos. | 1.75d? | 2024-07-22 | 2024-07-23 |  | 0d |  |  | Desarrollador Senior 1 | 14h |
| 105 | 1.4.7.5 | Registro de Emergencias. | 1d? | 2024-07-29 | 2024-07-29 |  | 7.62d |  |  | Desarrollador Junior 1 [62.5%] | 5h |
| 106 | 1.4.7.6 | Informe de Estado de Emergencias. | 1.12d? | 2024-07-29 | 2024-07-30 |  | 7.5d |  |  | Desarrollador Junior 2 | 9h |
| 107 | 1.4.7.7 | Alertas de Emergencias. | 1.38d? | 2024-07-31 | 2024-08-02 |  | 4.29d |  |  | Desarrollador Junior 2 | 11h |
| 108 | 1.4.7.8 | Gestión de Recursos en Emergencias. | 2d? | 2024-07-31 | 2024-08-02 |  | 3.73d |  |  | Desarrollador Junior 1 | 16h |
| 109 | 1.4.7.9 | Comunicación con Conductores de Vehículos de Transporte. | 1.5d? | 2024-07-29 | 2024-08-07 | 104 | 1.35d |  |  | Desarrollador Senior 2 | 12h |
| 110 | 1.4.7.10 | Comunicación con Clientes Finales. | 1.62d? | 2024-08-07 | 2024-08-08 | 104 | 0d |  |  | Desarrollador Senior 1 | 13h |
| 111 | 1.5 | Gestión de proyecto | 13.38d | 2024-03-19 | 2024-04-08 |  | 91.61d |  |  | Jefe del Proyecto | 107h |

| ID | WBS | Task | Duration | Start | Finish | Predecessors | Total slack | Free slack | Resources | Work |
| --- | --- | --- | --- | --- | --- | --- | --- | --- | --- | --- |
| 112 | 1.6 | **Pruebas y depuración** | 91.74d? | 2024-04-08 | 2024-08-13 | 7 | 0d |  |  | 72h |
| 113 | 1.6.1 | Pruebas y depuración - Integración con sistemas centrales | 1.5d? | 2024-04-08 | 2024-04-09 | 34 | 90.24d |  | Tester | 12h |
| 114 | 1.6.2 | Pruebas y depuración - Sistema de mensajería | 1d? | 2024-05-06 | 2024-05-07 | 40 | 70.24d |  | Tester | 8h |
| 115 | 1.6.3 | Pruebas y depuración - Gestión de usuarios | 1.62d? | 2024-05-30 | 2024-06-03 | 52 | 51.49d |  | Tester | 13h |
| 116 | 1.6.4 | Pruebas y depuración - Sistema de geoposicionamiento | 1.5d? | 2024-06-26 | 2024-06-28 | 68 | 32.49d |  | Tester | 12h |
| 117 | 1.6.5 | Pruebas y depuración - Aplicaciones de usuario app de avisos y mensajería | 1.12d? | 2024-07-03 | 2024-07-04 | 79 | 28.36d |  | Tester | 9h |
| 118 | 1.6.6 | Pruebas y depuración - Dashboard de seguimiento | 1.12d? | 2024-07-15 | 2024-07-16 | 90 | 20.16d |  | Tester | 9h |
| 119 | 1.6.7 | Pruebas y depuración- Aplicaciones de usuario para la gestión de emergencias | 1.12d? | 2024-08-09 | 2024-08-13 | 100 | 0d |  | Tester | 9h |
| 120 | 1.7 | QA | 0.33d? | 2024-04-12 | 2024-04-12 | 27 | 87.4d |  | Consultor de Tecnologia | 2.67h |
| 121 | 1.8 | **Hardware** | 48d? | 2024-03-01 | 2024-05-07 |  | 5d |  |  | 122.5h |
| 122 | 1.8.1 | **Adquisición de hardware** | 1.25d? | 2024-03-01 | 2024-03-04 |  | 116.61d |  |  | 2.5h |
| 123 | 1.8.1.1 | Elaboración de pedidos | 1d? | 2024-03-01 | 2024-03-01 |  | 116.61d | 0d | Responsable y administrador de sistemas [25%] | 2h |
| 124 | 1.8.1.2 | Recepción de los pedidos | 0.25d? | 2024-03-04 | 2024-03-04 | 123 | 116.61d |  | Responsable y administrador de sistemas [25%] | 0.5h |
| 125 | 1.8.2 | **Instalación de hardware** | 45.75d? | 2024-03-05 | 2024-05-07 | 5 | 2.75d |  |  | 120h |
| 126 | 1.8.2.1 | **Hospitales** | 44.75d? | 2024-03-05 | 2024-05-06 |  | 2.75d |  |  | 100h |
| 127 | 1.8.2.1.1 | **Hospital de Jarrio** | 3d? | 2024-03-05 | 2024-03-08 |  | 111.61d | 0d |  | 9h |
| 128 | 1.8.2.1.1.1 | **Instalación de cableado** | 1.5d? | 2024-03-05 | 2024-03-06 |  | 111.61d | 0d | Responsable y administrador de sistemas [25%] | 6h |
| 129 | 1.8.2.1.1.1.1 | Instalación del switch y router | 0.5d? | 2024-03-05 | 2024-03-05 |  | 111.61d | 0d | Responsable y administrador de sistemas [25%] | 1h |
| 130 | 1.8.2.1.1.1.2 | Configuración de puntos de red | 1d? | 2024-03-05 | 2024-03-06 | 129 | 111.61d |  | Responsable y administrador de sistemas [25%] | 2h |
| 131 | 1.8.2.1.1.2 | Instalación de portátiles | 0.5d? | 2024-03-06 | 2024-03-07 | 128 | 111.61d | 0d | Responsable y administrador de sistemas [25%] | 1h |
| 132 | 1.8.2.1.1.3 | Instalación de monitor de 45'' | 0.5d? | 2024-03-07 | 2024-03-07 | 131 | 111.61d | 0d | Responsable y administrador de sistemas [25%] | 1h |
| 133 | 1.8.2.1.1.4 | Instalación de telefonos IPVOID | 0.5d? | 2024-03-07 | 2024-03-08 | 132 | 111.61d |  | Responsable y administrador de sistemas [25%] | 1h |
| 134 | 1.8.2.1.2 | **Hospital Carmen y Severo Ochoa** | 3.12d? | 2024-03-08 | 2024-03-12 |  |  |  |  | 9h |
| 135 | 1.8.2.1.2.1 | **Instalación de cableado** | 1.5d? | 2024-03-08 | 2024-03-11 |  | 108.86d | 0d | Responsable y administrador de sistemas [25%] | 6h |
| 136 | 1.8.2.1.2.1.1 | Instalación del switch y router | 0.5d? | 2024-03-08 | 2024-03-08 |  | 108.86d | 0d | Responsable y administrador de sistemas [25%] | 1h |
| 137 | 1.8.2.1.2.1.2 | Configuración de puntos de red | 1d? | 2024-03-08 | 2024-03-11 | 136 | 108.86d |  | Responsable y administrador de sistemas [25%] | 2h |
| 138 | 1.8.2.1.2.2 | Instalación de portátiles | 0.5d? | 2024-03-11 | 2024-03-11 | 135 | 108.86d | 0d | Responsable y administrador de sistemas [25%] | 1h |
| 139 | 1.8.2.1.2.3 | Instalación de monitor de 45'' | 0.5d? | 2024-03-12 | 2024-03-12 | 138 | 108.86d | 0d | Responsable y administrador de sistemas [25%] | 1h |
| 140 | 1.8.2.1.2.4 | Instalación de telefonos IPVOID | 0.5d? | 2024-03-12 | 2024-03-12 | 139 | 108.86d |  | Responsable y administrador de sistemas [25%] | 1h |

| ID | WBS | Task | Duration | Start | Finish | Predecessors | Total slack | Free slack | Resources | Work |
| --- | --- | --- | --- | --- | --- | --- | --- | --- | --- | --- |
| 141 | 1.8.2.1.3 | **Hospital San Agustín** | 3.12d? | 2024-03-18 | 2024-03-20 |  |  |  |  | 9h |
| 142 | 1.8.2.1.3.1 | **Instalación de cableado** | 1.5d? | 2024-03-18 | 2024-03-19 |  | 102.36d | 0d | Responsable y administrador de sistemas [25%] | 6h |
| 143 | 1.8.2.1.3.1.1 | Instalación del switch y router | 0.5d? | 2024-03-18 | 2024-03-18 |  | 102.36d | 0d | Responsable y administrador de sistemas [25%] | 1h |
| 144 | 1.8.2.1.3.1.2 | Configuración de puntos de red | 1d? | 2024-03-18 | 2024-03-19 | 143 | 102.36d |  | Responsable y administrador de sistemas [25%] | 2h |
| 145 | 1.8.2.1.3.2 | Instalación de portátiles | 0.5d? | 2024-03-19 | 2024-03-19 | 142 | 102.36d | 0d | Responsable y administrador de sistemas [25%] | 1h |
| 146 | 1.8.2.1.3.3 | Instalación de monitor de 45'' | 0.5d? | 2024-03-20 | 2024-03-20 | 145 | 102.36d | 0d | Responsable y administrador de sistemas [25%] | 1h |
| 147 | 1.8.2.1.3.4 | Instalación de telefonos IPVOID | 0.5d? | 2024-03-20 | 2024-03-20 | 146 | 102.36d |  | Responsable y administrador de sistemas [25%] | 1h |
| 148 | 1.8.2.1.4 | **HUCA - Hospital Universitario Central de Asturias** | 15.62d? | 2024-03-25 | 2024-04-15 |  |  |  |  | 37h |
| 149 | 1.8.2.1.4.1 | **Instalación de cableado** | 3d? | 2024-03-25 | 2024-03-27 |  | 84.36d | 0d | Responsable y administrador de sistemas [25%] | 12h |
| 150 | 1.8.2.1.4.1.1 | Instalación del switch y router | 1d? | 2024-03-25 | 2024-03-25 |  | 84.36d | 0d | Responsable y administrador de sistemas [25%] | 2h |
| 151 | 1.8.2.1.4.1.2 | Configuración de puntos de red | 2d? | 2024-03-26 | 2024-03-27 | 150 | 84.36d |  | Responsable y administrador de sistemas [25%] | 4h |
| 152 | 1.8.2.1.4.2 | Instalación de portátiles | 1d? | 2024-03-28 | 2024-03-28 | 149 | 84.36d | 0d | Responsable y administrador de sistemas [25%] | 2h |
| 153 | 1.8.2.1.4.3 | Instalación de monitor de 45'' | 1d? | 2024-03-29 | 2024-03-29 | 152 | 84.36d | 0d | Responsable y administrador de sistemas [25%] | 2h |
| 154 | 1.8.2.1.4.4 | Instalación de telefonos IPVOID | 1d? | 2024-04-01 | 2024-04-01 | 153 | 84.36d | 0d | Responsable y administrador de sistemas [25%] | 2h |
| 155 | 1.8.2.1.4.5 | Instalación del servidor central | 4.5d? | 2024-04-02 | 2024-04-08 | 154 | 84.36d | 0d | Responsable y administrador de sistemas [25%] | 9h |
| 156 | 1.8.2.1.4.6 | Instalación de SAI de respaldo | 3d? | 2024-04-08 | 2024-04-11 | 155 | 84.36d | 0d | Responsable y administrador de sistemas [25%] | 6h |
| 157 | 1.8.2.1.4.7 | Instalación de RACK de discos duros | 2d? | 2024-04-11 | 2024-04-15 | 156 | 84.36d |  | Responsable y administrador de sistemas [25%] | 4h |
| 158 | 1.8.2.1.5 | **Hospital Universitario de Cabueñes** | 3.12d? | 2024-04-17 | 2024-04-19 |  |  |  |  | 9h |
| 159 | 1.8.2.1.5.1 | **Instalación de cableado** | 1.5d? | 2024-04-17 | 2024-04-18 |  | 80.36d | 0d | Responsable y administrador de sistemas [25%] | 6h |
| 160 | 1.8.2.1.5.1.1 | Instalación del switch y router | 0.5d? | 2024-04-17 | 2024-04-17 |  | 80.36d | 0d | Responsable y administrador de sistemas [25%] | 1h |
| 161 | 1.8.2.1.5.1.2 | Configuración de puntos de red | 1d? | 2024-04-17 | 2024-04-18 | 160 | 80.36d |  | Responsable y administrador de sistemas [25%] | 2h |
| 162 | 1.8.2.1.5.2 | Instalación de portátiles | 0.5d? | 2024-04-18 | 2024-04-18 | 159 | 80.36d | 0d | Responsable y administrador de sistemas [25%] | 1h |
| 163 | 1.8.2.1.5.3 | Instalación de monitor de 45'' | 0.5d? | 2024-04-19 | 2024-04-19 | 162 | 80.36d | 0d | Responsable y administrador de sistemas [25%] | 1h |
| 164 | 1.8.2.1.5.4 | Instalación de telefonos IPVOID | 0.5d? | 2024-04-19 | 2024-04-19 | 163 | 80.36d |  | Responsable y administrador de sistemas [25%] | 1h |

| ID | WBS | Task | Duration | Start | Finish | Predecessors | Total slack | Free slack | Resources | Work |
| --- | --- | --- | --- | --- | --- | --- | --- | --- | --- | --- |
| 165 | 1.8.2.1.6 | **Hospital de Oriente de Asturias** | 3.12d? | 2024-04-22 | 2024-04-24 |  |  |  |  | 9h |
| 166 | 1.8.2.1.6.1 | **Instalación de cableado** | 1.5d? | 2024-04-22 | 2024-04-23 |  | 77.86d | 0d | Responsable y administrador de sistemas [25%] | 6h |
| 167 | 1.8.2.1.6.1.1 | Instalación del switch y router | 0.5d? | 2024-04-22 | 2024-04-22 |  | 77.86d | 0d | Responsable y administrador de sistemas [25%] | 1h |
| 168 | 1.8.2.1.6.1.2 | Configuración de puntos de red | 1d? | 2024-04-22 | 2024-04-23 | 167 | 77.86d |  | Responsable y administrador de sistemas [25%] | 2h |
| 169 | 1.8.2.1.6.2 | Instalación de portátiles | 0.5d? | 2024-04-23 | 2024-04-23 | 166 | 77.86d | 0d | Responsable y administrador de sistemas [25%] | 1h |
| 170 | 1.8.2.1.6.3 | Instalación de monitor de 45'' | 0.5d? | 2024-04-24 | 2024-04-24 | 169 | 77.86d | 0d | Responsable y administrador de sistemas [25%] | 1h |
| 171 | 1.8.2.1.6.4 | Instalación de telefonos IPVOID | 0.5d? | 2024-04-24 | 2024-04-24 | 170 | 77.86d |  | Responsable y administrador de sistemas [25%] | 1h |
| 172 | 1.8.2.1.7 | **Hospital Álvarez Buylla** | 3.12d? | 2024-04-26 | 2024-04-30 |  |  |  |  | 9h |
| 173 | 1.8.2.1.7.1 | **Instalación de cableado** | 1.5d? | 2024-04-26 | 2024-04-29 |  | 73.86d | 0d | Responsable y administrador de sistemas [25%] | 6h |
| 174 | 1.8.2.1.7.1.1 | Instalación del switch y router | 0.5d? | 2024-04-26 | 2024-04-26 |  | 73.86d | 0d | Responsable y administrador de sistemas [25%] | 1h |
| 175 | 1.8.2.1.7.1.2 | Configuración de puntos de red | 1d? | 2024-04-26 | 2024-04-29 | 174 | 73.86d |  | Responsable y administrador de sistemas [25%] | 2h |
| 176 | 1.8.2.1.7.2 | Instalación de portátiles | 0.5d? | 2024-04-29 | 2024-04-29 | 173 | 73.86d | 0d | Responsable y administrador de sistemas [25%] | 1h |
| 177 | 1.8.2.1.7.3 | Instalación de monitor de 45'' | 0.5d? | 2024-04-30 | 2024-04-30 | 176 | 73.86d | 0d | Responsable y administrador de sistemas [25%] | 1h |
| 178 | 1.8.2.1.7.4 | Instalación de telefonos IPVOID | 0.5d? | 2024-04-30 | 2024-04-30 | 177 | 73.86d |  | Responsable y administrador de sistemas [25%] | 1h |
| 179 | 1.8.2.1.8 | **Hospital Valle del Nalón** | 3.12d? | 2024-05-02 | 2024-05-06 |  |  |  |  | 9h |
| 180 | 1.8.2.1.8.1 | **Instalación de cableado** | 1.5d? | 2024-05-02 | 2024-05-03 |  | 69.86d | 0d | Responsable y administrador de sistemas [25%] | 6h |
| 181 | 1.8.2.1.8.1.1 | Instalación del switch y router | 0.5d? | 2024-05-02 | 2024-05-02 |  | 69.86d | 0d | Responsable y administrador de sistemas [25%] | 1h |
| 182 | 1.8.2.1.8.1.2 | Configuración de puntos de red | 1d? | 2024-05-02 | 2024-05-03 | 181 | 69.86d |  | Responsable y administrador de sistemas [25%] | 2h |
| 183 | 1.8.2.1.8.2 | Instalación de portátiles | 0.5d? | 2024-05-03 | 2024-05-03 | 180 | 69.86d | 0d | Responsable y administrador de sistemas [25%] | 1h |
| 184 | 1.8.2.1.8.3 | Instalación de monitor de 45'' | 0.5d? | 2024-05-06 | 2024-05-06 | 183 | 69.86d | 0d | Responsable y administrador de sistemas [25%] | 1h |
| 185 | 1.8.2.1.8.4 | Instalación de telefonos IPVOID | 0.5d? | 2024-05-06 | 2024-05-06 | 184 | 69.86d |  | Responsable y administrador de sistemas [25%] | 1h |
| 186 | 1.8.2.2 | **Vehiculos de emergencia** | 42.75d? | 2024-03-08 | 2024-05-07 |  | 69.86d |  |  | 20h |
| 187 | 1.8.2.2.1 | Zona 1 - vehículos de Jarrio | 1d? | 2024-03-08 | 2024-03-11 | 127 | 111.61d |  | Responsable y administrador de sistemas [25%] | 2h |
| 188 | 1.8.2.2.2 | Zona 2 - vehículos de Cangas del Narcea | 1d? | 2024-03-13 | 2024-03-13 | 134 | 108.86d |  | Responsable y administrador de sistemas [25%] | 2h |
| 189 | 1.8.2.2.3 | Zona 3 - vehículos de Aviles | 1.5d? | 2024-03-21 | 2024-03-22 | 141 | 102.36d |  | Responsable y administrador de sistemas [25%] | 3h |
| 190 | 1.8.2.2.4 | Zona 4 - vehículos de Oviedo | 2d? | 2024-04-15 | 2024-04-17 | 148 | 84.36d |  | Responsable y administrador de sistemas [25%] | 4h |
| 191 | 1.8.2.2.5 | Zona 5 - vehículos de Gijón | 1.5d? | 2024-04-22 | 2024-04-23 | 158 | 80.36d |  | Responsable y administrador de sistemas [25%] | 3h |
| 192 | 1.8.2.2.6 | Zona 6 - vehículos de Arriondas | 1d? | 2024-04-25 | 2024-04-25 | 165 | 77.86d |  | Responsable y administrador de sistemas [25%] | 2h |
| 193 | 1.8.2.2.7 | Zona 7 - vehículos de Mieres | 1d? | 2024-05-01 | 2024-05-01 | 172 | 73.86d |  | Responsable y administrador de sistemas [25%] | 2h |
| 194 | 1.8.2.2.8 | Zona 8 - vehículos de Langreo | 1d? | 2024-05-07 | 2024-05-07 | 179 | 69.86d |  | Responsable y administrador de sistemas [25%] | 2h |
