# Planificación del proyecto DPPI

Schedule from MS Project, 2024-02-26 to 2024-04-22, A marks actual dates.
Universidad de Oviedo

## Calendars

- CalendarioDelProyecto: Mon-Sun 10:00-12:00.

## Resources

| Resource |
| --- |
| Omar |
| Pablo |
| David |
| Mercurio |

## Schedule

| ID | WBS | Task | Type | Duration | Start | Finish | Predecessors | Complete | Remaining | Total slack |
| --- | --- | --- | --- | --- | --- | --- | --- | --- | --- | --- |
| 1 | 1 | **Hitos** |  | 13.68d | 2024-02-27 A | 2024-04-22 |  |  | 13.68d | 0d |
| 2 | 1.1 | **Memoria** |  | 13.68d | 2024-02-27 A | 2024-04-22 |  |  | 13.68d | 0d |
| 3 | 1.1.1 | Hojas de identificación | milestone | 0d | 2024-02-27 A | 2024-02-27 A | 50 | 100% |  |  |
| 4 | 1.1.2 | Introducción | milestone | 0d | 2024-03-27 A | 2024-03-27 A | 51 | 100% |  |  |
| 5 | 1.1.3 | Objeto | milestone | 0d | 2024-03-18 A | 2024-03-18 A | 52 | 100% |  |  |
| 6 | 1.1.4 | Antecedentes | milestone | 0d | 2024-04-06 A | 2024-04-06 A | 53 | 100% |  |  |
| 7 | 1.1.5 | Descripción de la situación actual | milestone | 0d | 2024-03-16 A | 2024-03-16 A | 54 | 100% |  |  |
| 8 | 1.1.6 | Normas y referencias | milestone | 0d | 2024-04-19 | 2024-04-19 | 55 |  |  | 0.68d |
| 9 | 1.1.7 | Definiciones y abreviaturas | milestone | 0d | 2024-04-22 | 2024-04-22 | 60 |  |  | 0d |
| 10 | 1.1.8 | Requisitos iniciales | milestone | 0d | 2024-04-01 | 2024-04-01 | 63 |  |  | 5.28d |
| 11 | 1.1.9 | Alcance | milestone | 0d | 2024-04-07 A | 2024-04-07 A | 64 | 100% |  |  |
| 12 | 1.1.10 | Hipótesis y restricciones | milestone | 0d | 2024-04-08 | 2024-04-08 | 67 |  |  | 3.59d |
| 13 | 1.1.11 | Estudio de alternativas y viabilidad | milestone | 0d | 2024-04-07 | 2024-04-07 | 70 |  |  | 3.8d |
| 14 | 1.1.12 | Descripción de la solución propuesta | milestone | 0d | 2024-03-11 A | 2024-03-11 A | 74 | 100% |  |  |
| 15 | 1.1.13 | Análisis de riesgos | milestone | 0d | 2024-04-11 | 2024-04-11 | 75 |  |  | 2.85d |
| 16 | 1.1.14 | Organización y gestión del proyecto | milestone | 0d | 2024-04-14 | 2024-04-14 | 78 |  |  | 1.93d |
| 17 | 1.1.15 | **Planificación temporal** |  | 3.62d | 2024-03-12 A | 2024-03-27 |  |  | 3.62d | 6.55d |
| 18 | 1.1.15.1 | WBS | milestone | 0d | 2024-03-12 A | 2024-03-12 | 81 | 50% | 0d | 10.18d |
| 19 | 1.1.15.2 | Precedencias y estimación de esfuerzos | milestone | 0d | 2024-03-27 A | 2024-03-27 A | 82, 83 | 100% |  |  |
| 20 | 1.1.16 | Resumen del presupuesto | milestone | 0d | 2024-04-11 | 2024-04-11 | 84 |  |  | 2.67d |
| 21 | 1.1.17 | Orden de prioridad de los documentos básicos del proyecto | milestone | 0d | 2024-04-09 | 2024-04-09 | 85 |  |  | 3.41d |
| 22 | 1.2 | **Anexos** |  | 13.33d | 2024-02-28 A | 2024-04-22 |  |  | 13.33d | 0.12d |
| 23 | 1.2.1 | Documentación de entrada | milestone | 0d | 2024-04-08 | 2024-04-08 | 87 |  |  | 3.61d |
| 24 | 1.2.2 | Análisis y Diseño del sistema | milestone | 0d | 2024-04-22 | 2024-04-22 | 90 |  |  | 0.12d |
| 25 | 1.2.3 | Estimación de tamaños y esfuerzos | milestone | 0d | 2024-03-19 A | 2024-03-19 A | 94 | 100% |  |  |

| ID | WBS | Task | Type | Duration | Start | Finish | Predecessors | Complete | Remaining | Total slack | Constraint | Resources | Work | Actual work |
| --- | --- | --- | --- | --- | --- | --- | --- | --- | --- | --- | --- | --- | --- | --- |
| 26 | 1.2.4 | **Planes de gesión del proyecto** |  | 11.03d | 2024-02-28 | 2024-04-12 |  |  |  | 2.42d |  |  |  |  |
| 27 | 1.2.4.1 | Gestión de la integración | milestone | 0d | 2024-04-08 | 2024-04-08 | 107 |  |  | 3.55d |  |  |  |  |
| 28 | 1.2.4.2 | Gestión del alcance | milestone | 0d | 2024-04-07 | 2024-04-07 | 108 |  |  | 3.8d |  |  |  |  |
| 29 | 1.2.4.3 | Gestión de plazos | milestone | 0d | 2024-02-28 | 2024-02-28 | 109 |  |  | 13.46d |  |  |  |  |
| 30 | 1.2.4.4 | Gestión de costes | milestone | 0d | 2024-04-12 | 2024-04-12 | 110 |  |  | 2.42d |  |  |  |  |
| 31 | 1.2.4.5 | Gestion de la calidad | milestone | 0d | 2024-03-08 | 2024-03-08 | 111 |  |  | 11.18d |  |  |  |  |
| 32 | 1.2.4.6 | Gestión de recursos humanos | milestone | 0d | 2024-03-18 | 2024-03-18 | 112 |  |  | 8.89d |  |  |  |  |
| 33 | 1.2.4.7 | Gestión de comunicaciones | milestone | 0d | 2024-02-29 | 2024-02-29 | 113 |  |  | 13.36d |  |  |  |  |
| 34 | 1.2.4.8 | Gestión de riesgos | milestone | 0d | 2024-04-06 | 2024-04-06 | 114 |  |  | 4.05d |  |  |  |  |
| 35 | 1.2.4.9 | Gestión de adquisiciones | milestone | 0d | 2024-04-09 | 2024-04-09 | 115 |  |  | 3.34d |  |  |  |  |
| 36 | 1.2.5 | Plan de seguridad | milestone | 0d | 2024-04-06 | 2024-04-06 | 116 |  |  | 4.05d |  |  |  |  |
| 37 | 1.2.6 | Otros anexos | milestone | 0d | 2024-04-14 | 2024-04-14 | 117 |  |  | 2.05d |  |  |  |  |
| 38 | 1.3 | Especificaciones del sistema | milestone | 0d | 2024-03-27 | 2024-03-27 | 118 |  |  | 6.55d |  |  |  |  |
| 39 | 1.4 | Presupuesto | milestone | 0d | 2024-04-06 | 2024-04-06 | 119 |  |  | 3.92d |  |  |  |  |
| 40 | 1.5 | Estudios con entidad propia | milestone | 0d | 2024-04-10 | 2024-04-10 | 120 |  |  | 3.05d |  |  |  |  |
| 41 | 2 | **Tareas a realizar para el proyecto de laboratorio de DPPI** |  | 14.18d | 2024-02-26 A | 2024-04-22 |  | 86% | 1.95d | 0d |  |  | 126.53h | 113.03h |
| 42 | 2.1 | Creación de carpeta compartida | manual | 0.03d | 2024-02-26 A | 2024-02-26 A |  | 100% |  |  |  | David; Omar; Mercurio; Pablo | 1h | 1h |
| 43 | 2.2 | **Creación de una Wiki** |  | 7.88d | 2024-02-26 A | 2024-03-28 A |  | 100% |  |  |  |  | 2.5h | 2.5h |
| 44 | 2.2.1 | Creación de una versión básica | manual | 0.06d | 2024-02-26 A | 2024-02-26 A |  | 100% |  |  |  | Mercurio | 0.5h | 0.5h |
| 45 | 2.2.2 | **Poner más páginas e información en la wiki** |  | 5.62d | 2024-03-06 A | 2024-03-28 A |  | 100% |  |  |  | Omar | 2h | 2h |
| 46 | 2.2.2.1 | Modificación del indice de la WIKI | manual | 0.12d | 2024-03-06 A | 2024-03-06 A |  | 100% |  |  |  | Omar | 1h | 1h |
| 47 | 2.2.2.2 | Añadir las actas realizadas |  | 0.12d | 2024-03-27 A | 2024-03-28 A |  | 100% |  |  | start no earlier than 2024-03-27 | Omar | 1h | 1h |
| 48 | 2.3 | Creación de plantilla de word | manual | 0.25d | 2024-02-26 A | 2024-02-27 A |  | 100% |  |  |  | Omar | 2h | 2h |
| 49 | 2.4 | **Redacción de la Memoria** |  | 14.14d | 2024-02-26 A | 2024-04-22 |  | 87% | 1.81d | 0d |  |  | 60.03h | 54.03h |
| 50 | 2.4.1 | Redacción de Hojas de identificación | manual | 1.25d | 2024-02-27 A | 2024-02-27 A |  | 100% |  |  |  | Omar | 1h | 1h |
| 51 | 2.4.2 | Redacción de Introducción |  | 1.25d | 2024-02-26 A | 2024-03-27 A |  | 100% |  |  |  | David | 0.5h | 0.5h |
| 52 | 2.4.3 | Redacción de Objeto |  | 0.5h | 2024-03-18 A | 2024-03-18 A |  | 100% |  |  | start no earlier than 2024-03-18 | Mercurio | 0.05h | 0.05h |
| 53 | 2.4.4 | Redacción de Antecedentes |  | 1.25d | 2024-03-28 A | 2024-04-06 A |  | 100% |  |  |  | Pablo | 2h | 2h |
| 54 | 2.4.5 | Redacción de Descripción de la situación actual |  | 0.5h | 2024-03-16 A | 2024-03-16 A |  | 100% |  |  | start no earlier than 2024-03-16 | Omar | 0.03h | 0.03h |

| ID | WBS | Task | Type | Duration | Start | Finish | Predecessors | Complete | Remaining | Total slack | Free slack | Constraint | Resources | Work | Actual work |
| --- | --- | --- | --- | --- | --- | --- | --- | --- | --- | --- | --- | --- | --- | --- | --- |
| 55 | 2.4.6 | **Redacción de Normas y referencias** |  | 8.22d | 2024-03-18 A | 2024-04-19 |  | 67% | 2.74d | 0.55d | 0d |  |  | 14h | 13h |
| 56 | 2.4.6.1 | **Redacción de Disposiciones legales y normas aplicadas** |  | 4.22d | 2024-03-18 A | 2024-04-03 A |  | 100% |  |  |  |  |  | 13h | 13h |
| 57 | 2.4.6.1.1 | Recopilación del conjunto de disposiciones y normas aplicables al proyecto |  | 1.25d | 2024-03-18 A | 2024-03-28 A |  | 100% |  |  |  |  | David | 3h | 3h |
| 58 | 2.4.6.1.2 | Inclusión de las normas en el documento |  | 1.25d | 2024-03-29 A | 2024-04-03 A | 57 | 100% |  |  |  |  | Omar | 10h | 10h |
| 59 | 2.4.6.2 | Redacción de Bibliografía |  | 1.25d | 2024-04-11 | 2024-04-19 |  |  |  | 0.55d |  | start no earlier than 2024-04-11 | Pablo | 1h |  |
| 60 | 2.4.7 | **Redacción de Definiciones y abreviaturas** |  | 0.12d | 2024-04-22 | 2024-04-22 |  |  |  | 0d |  |  |  | 1h |  |
| 61 | 2.4.7.1 | Recopilación de las definiciones y abreviaturas utilizadas en el proyecto |  | 0.06d | 2024-04-22 | 2024-04-22 | 50, 51, 52, 53, 54, 55, 63, 64, 67, 70, 74, 75, 78, 80, 84, 85, 86, 118, 119, 120 |  |  | 0d |  |  | David | 0.5h |  |
| 62 | 2.4.7.2 | Documentación de las definiciones y abrevieturas |  | 0.06d | 2024-04-22 | 2024-04-22 | 61 |  |  | 0d |  |  | Mercurio | 0.5h |  |
| 63 | 2.4.8 | Identificación y redacción de los requisitos iniciales |  | 0.65d | 2024-03-29 A | 2024-04-01 A |  | 100% |  |  |  | start no earlier than 2024-03-29 | Pablo | 4h | 4h |
| 64 | 2.4.9 | **Redacción de Alcance** |  | 7.87d | 2024-03-07 A | 2024-04-07 A |  | 100% |  |  |  |  |  | 2.5h | 2.5h |
| 65 | 2.4.9.1 | Enumeración y contenido de todos los entregables del proyecto |  | 0.49d | 2024-04-02 A | 2024-04-07 A |  | 100% |  |  |  | start no earlier than 2024-04-02 | Omar | 2h | 2h |
| 66 | 2.4.9.2 | Documentación del alcance |  | 1.25d | 2024-03-07 A | 2024-03-25 A | 65 | 100% |  |  |  |  | David | 0.5h | 0.5h |
| 67 | 2.4.10 | **Redacción de Hipótesis y restricciones** |  | 7.06d | 2024-03-11 A | 2024-04-08 A |  | 100% |  |  |  |  |  | 11h | 11h |
| 68 | 2.4.10.1 | Identificación de las hipotesís y las restricciones |  | 1.25d | 2024-03-11 A | 2024-03-18 A |  | 100% |  |  |  |  | David | 10h | 10h |
| 69 | 2.4.10.2 | Documentación de las hipótesis y restricciones |  | 0.46d | 2024-04-05 A | 2024-04-08 A | 68 | 100% |  |  |  |  | Pablo | 1h | 1h |
| 70 | 2.4.11 | **Redacción de Estudio de alternativas y viabilidad** |  | 1.62d | 2024-04-01 A | 2024-04-07 A |  | 100% |  |  |  |  |  | 4h | 4h |
| 71 | 2.4.11.1 | Realización de estudios de alternativas |  | 0.55d | 2024-04-01 A | 2024-04-05 A |  | 100% |  |  |  | start no earlier than 2024-04-05 | Omar | 2h | 2h |
| 72 | 2.4.11.2 | Evaluación de la viabilidad de las alternativas |  | 0.12d | 2024-04-06 A | 2024-04-06 A | 71 | 100% |  |  |  | start no earlier than 2024-04-06 | David | 1h | 1h |
| 73 | 2.4.11.3 | Documentación de los resultados del estudio y la viabilidad |  | 1h | 2024-04-07 A | 2024-04-07 A | 72 | 100% |  |  |  | start no earlier than 2024-04-07 | David | 1h | 1h |
| 74 | 2.4.12 | Descripción de la solución propuesta y sus características |  | 1.25d | 2024-02-26 A | 2024-03-11 A |  | 100% |  |  |  |  | Pablo | 0.5h | 0.5h |
| 75 | 2.4.13 | **Redacción de Análisis de Riesgos** |  | 4.08d | 2024-03-26 A | 2024-04-11 A |  | 100% |  |  |  |  |  | 5.4h | 5.4h |
| 76 | 2.4.13.1 | Identificación de riesgos | manual | 2d | 2024-03-26 A | 2024-04-08 A |  | 100% |  |  |  |  | Omar | 4.4h | 4.4h |
| 77 | 2.4.13.2 | Evaluación de impacto y acciones de mitigación |  | 0.33d | 2024-04-09 A | 2024-04-11 A | 76 | 100% |  |  |  | start no earlier than 2024-04-09 | David | 1h | 1h |
| 78 | 2.4.14 | **Redacción de Organización y gestión del proyecto** |  | 0.75d | 2024-04-12 A | 2024-04-14 A |  | 100% |  |  |  |  |  | 6h | 6h |
| 79 | 2.4.14.1 | Creación de cronogramas incluyendo entregas parciales, hitos intermedios y duración del proyecto |  | 0.75d | 2024-04-12 A | 2024-04-14 A | 82 | 100% |  |  |  | start no earlier than 2024-04-12 | Pablo | 6h | 6h |

| ID | WBS | Task | Type | Duration | Start | Finish | Predecessors | Complete | Remaining | Total slack | Free slack | Constraint | Resources | Work | Actual work |
| --- | --- | --- | --- | --- | --- | --- | --- | --- | --- | --- | --- | --- | --- | --- | --- |
| 80 | 2.4.15 | **Redacción de Planificación temporal** |  | 3.88d | 2024-03-12 A | 2024-03-27 A |  | 100% |  |  |  |  |  | 3.05h | 3.05h |
| 81 | 2.4.15.1 | Redacción de WBS | manual | 1.25d | 2024-03-12 A | 2024-03-12 A |  | 100% |  |  |  |  | Mercurio | 2h | 2h |
| 82 | 2.4.15.2 | Establecimiento de las relaciones de precedencia |  | 0.12d | 2024-03-13 A | 2024-03-13 A | 81 | 100% |  |  |  |  | David | 0.05h | 0.05h |
| 83 | 2.4.15.3 | Estimación de esfuerzos y recursos necesarios |  | 1.25d | 2024-03-18 A | 2024-03-27 A | 82, 94 | 100% |  |  |  |  | Mercurio | 1h | 1h |
| 84 | 2.4.16 | Redacción de Resumen del Presupuesto |  | 1.25d | 2024-04-07 | 2024-04-11 | 119 |  |  | 2.55d | 0d |  | Pablo | 4h |  |
| 85 | 2.4.17 | Redacción de Orden de prioridad de los documentos básicos del proyecto. |  | 0.37d | 2024-04-04 A | 2024-04-09 A |  | 100% |  |  |  | start no earlier than 2024-04-05 | Omar | 1h | 1h |
| 86 | 2.5 | **Redacción de Anexos** |  | 13.96d | 2024-02-26 A | 2024-04-22 |  | 85% | 2.15d | 0d |  |  |  | 51h | 46.5h |
| 87 | 2.5.1 | **Redacción de Documentación de entrada** |  | 3.31d | 2024-03-26 A | 2024-04-08 A |  | 100% |  |  |  |  |  | 2.5h | 2.5h |
| 88 | 2.5.1.1 | Recopilación y organización de documentos adicionales relevantes |  | 0.49d | 2024-03-26 A | 2024-04-07 A |  | 100% |  |  |  | finish no earlier than 2024-04-07 | David | 2h | 2h |
| 89 | 2.5.1.2 | Revisión y actualización de los anexos según sea necesario |  | 0.06d | 2024-04-08 A | 2024-04-08 A | 88 | 100% |  |  |  |  | Pablo | 0.5h | 0.5h |
| 90 | 2.5.2 | **Redacción de Análisis y Diseño del sistema** |  | 3.8d | 2024-04-07 A | 2024-04-22 |  | 59% | 1.56d | 0d |  |  |  | 3.5h | 3h |
| 91 | 2.5.2.1 | Realización de análisis detallado de los requerimientos del sistema |  | 0.55d | 2024-04-07 A | 2024-04-10 A |  | 100% |  |  |  | start no earlier than 2024-04-07 | Pablo | 2.5h | 2.5h |
| 92 | 2.5.2.2 | Diseño de la arquitectura y componentes del sistema |  | 1.25d | 2024-04-10 A | 2024-04-17 A | 91, 81 | 100% |  |  |  | start no earlier than 2024-04-10 | Omar | 0.5h | 0.5h |
| 93 | 2.5.2.3 | Revisión y validación del análisis y diseño del sistema |  | 1.25d | 2024-04-17 | 2024-04-22 | 92 |  |  | 0d |  | start no earlier than 2024-04-17 | David | 0.5h |  |
| 94 | 2.5.3 | **Redacción de Estimación de tamaño y esfuerzos** |  | 9.05d | 2024-03-05 A | 2024-04-10 A |  | 100% |  |  |  |  |  | 25h | 25h |
| 95 | 2.5.3.1 | **Estimación de los modulos** |  | 1.12d | 2024-03-05 A | 2024-03-09 A |  | 100% |  |  |  |  |  | 14h | 14h |
| 96 | 2.5.3.1.1 | Estimación modulo 1 | manual | 0.25d | 2024-03-05 A | 2024-03-06 A |  | 100% |  |  |  |  | Mercurio | 2h | 2h |
| 97 | 2.5.3.1.2 | Estimación modulo 2 |  | 0.25d | 2024-03-07 A | 2024-03-09 A | 96 | 100% |  |  |  |  | Mercurio | 2h | 2h |
| 98 | 2.5.3.1.3 | Estimación modulo 3 | manual | 0.25d | 2024-03-05 A | 2024-03-06 A |  | 100% |  |  |  |  | Pablo | 2h | 2h |
| 99 | 2.5.3.1.4 | Estimación modulo 4 | manual | 0.25d | 2024-03-05 A | 2024-03-06 A |  | 100% |  |  |  |  | Omar | 2h | 2h |
| 100 | 2.5.3.1.5 | Estimación modulo 5 |  | 0.25d | 2024-03-07 A | 2024-03-09 A | 99 | 100% |  |  |  |  | Omar | 2h | 2h |
| 101 | 2.5.3.1.6 | Estimación modulo 6 |  | 0.25d | 2024-03-07 A | 2024-03-09 A | 98 | 100% |  |  |  |  | Pablo | 2h | 2h |
| 102 | 2.5.3.1.7 | Estimación modulo 7 | manual | 0.25d | 2024-03-05 A | 2024-03-06 A |  | 100% |  |  |  |  | David | 2h | 2h |
| 103 | 2.5.3.2 | Calculo general de las estimaciones |  | 1.25d | 2024-03-10 A | 2024-03-19 A | 95 | 100% |  |  |  |  | Pablo | 1h | 1h |
| 104 | 2.5.3.3 | Inclusión de la explicación de los PF | manual | 0.12d | 2024-04-05 A | 2024-04-10 A |  | 100% |  |  |  |  | Omar | 1h | 1h |
| 105 | 2.5.3.4 | Inclusión de la estimación de esfuerzos de los módulos |  | 1d | 2024-04-06 A | 2024-04-08 A |  | 100% |  |  |  |  | Mercurio | 9h | 9h |

| ID | WBS | Task | Type | Duration | Start | Finish | Predecessors | Complete | Remaining | Total slack | Free slack | Constraint | Resources | Work | Actual work |
| --- | --- | --- | --- | --- | --- | --- | --- | --- | --- | --- | --- | --- | --- | --- | --- |
| 106 | 2.5.4 | **Redacción de Planes de gestion del proyecto** |  | 11.66d | 2024-02-26 A | 2024-04-12 |  | 76% | 2.74d | 2.3d |  |  |  | 17h | 13h |
| 107 | 2.5.4.1 | Redacción de Gestión de la integración |  | 0.25d | 2024-04-07 A | 2024-04-08 A |  | 100% |  |  |  | start no earlier than 2024-04-07 | Omar | 2h | 2h |
| 108 | 2.5.4.2 | Redacción de Gestión del alcance |  | 0.12d | 2024-04-07 A | 2024-04-07 A |  | 100% |  |  |  |  | David | 1h | 1h |
| 109 | 2.5.4.3 | Redacción de Gestión de plazos |  | 0.25d | 2024-02-26 A | 2024-02-28 A |  | 100% |  |  |  |  | Mercurio | 2h | 2h |
| 110 | 2.5.4.4 | Redacción de Gestión de costes |  | 0.25d | 2024-04-12 | 2024-04-12 |  |  |  | 0.8d | 0d | start no earlier than 2024-04-12 | Pablo | 2h |  |
| 111 | 2.5.4.5 | Redacción de Gestión de la calidad |  | 0.25d | 2024-03-07 A | 2024-03-08 A |  | 100% |  |  |  |  | Mercurio | 2h | 2h |
| 112 | 2.5.4.6 | Redacción de Gestion de recursos humanos |  | 0.25d | 2024-03-16 A | 2024-03-18 A |  | 100% |  |  |  |  | David | 2h | 2h |
| 113 | 2.5.4.7 | Redacción de Gestión de comunicaciones |  | 0.25d | 2024-02-28 | 2024-02-29 |  |  |  | 13.24d | 0d |  | Mercurio | 2h |  |
| 114 | 2.5.4.8 | Redacción de Gestión de riesgos |  | 0.25d | 2024-04-05 A | 2024-04-06 A |  | 100% |  |  |  | start no earlier than 2024-04-05 | Pablo | 2h | 2h |
| 115 | 2.5.4.9 | Redacción de Gestión de adquisiciones |  | 0.25d | 2024-04-06 A | 2024-04-09 A |  | 100% |  |  |  | start no earlier than 2024-04-06 | Omar | 2h | 2h |
| 116 | 2.5.5 | Redacción de Plan de seguridad |  | 0.25d | 2024-04-05 A | 2024-04-06 A |  | 100% |  |  |  | start no earlier than 2024-04-05 | David | 2h | 2h |
| 117 | 2.5.6 | Redacción de Otros anexos |  | 1.25d | 2024-04-05 A | 2024-04-14 A | 87, 90, 94, 106, 116 | 100% |  |  |  |  | Omar | 1h | 1h |
| 118 | 2.6 | Redacción de Especificaciones de los requisitos del producto |  | 1.25d | 2024-02-26 A | 2024-03-27 A |  | 100% |  |  |  |  | David | 3h | 3h |
| 119 | 2.7 | Redacción de Presupuesto | manual | 2h | 2024-04-06 | 2024-04-06 | 75, 80, 78, 94, 110, 112, 115 |  |  |  |  |  | Mercurio | 2h |  |
| 120 | 2.8 | **Redacción de Estudios con entidad propia** |  | 10.31d | 2024-02-29 A | 2024-04-10 |  | 80% | 2.06d | 2.92d | 0d |  |  | 5h | 4h |
| 121 | 2.8.1 | Legislacion sobre seguridad y proteccion de datos |  | 0.25d | 2024-04-06 A | 2024-04-08 A |  | 100% |  |  |  | start no earlier than 2024-04-06 | Pablo | 2h | 2h |
| 122 | 2.8.2 | Legislacion sobre propiedad intelectual e industrial |  | 0.12d | 2024-04-06 A | 2024-04-07 A |  | 100% |  |  |  | start no earlier than 2024-04-06 | Omar | 1h | 1h |
| 123 | 2.8.3 | Prevencion de riesgos laborales |  | 0.12d | 2024-04-07 A | 2024-04-10 A |  | 100% |  |  |  |  | David | 1h | 1h |
| 124 | 2.8.4 | Impacto ambiental |  | 0.12d | 2024-02-29 | 2024-03-01 |  |  |  | 12.99d |  |  | Mercurio | 1h |  |
